# Cronograma-ES-2-P1-FINAL

How a schedule from MS Project changed from version to version. A marks actual dates.

## Version 1 (saved 2015-03-05)

Note of the change: Ultima versão - inicial

| ID | WBS | Task | Duration | Start | Finish | Predecessors | Complete |
| --- | --- | --- | --- | --- | --- | --- | --- |
| 1 | 1 | **Gerência** | 77d | 2014-12-16 A | 2015-04-01 |  | 42% |
| 2 |  | Revisão Documento de Requisitos | 1d | 2014-12-16 | 2014-12-16 |  |  |
| 3 |  | Revisão do Ciclo I | 32d | 2015-01-16 A | 2015-02-28 | 2 | 25% |
| 4 |  | Revisão do Ciclo II | 27d | 2015-01-16 A | 2015-02-21 | 3SS | 25% |
| 5 |  | Revisão do Ciclo III | 28d | 2015-02-22 | 2015-03-31 | 4SS |  |
| 6 |  | Finalização do Projeto | 1d | 2015-03-31 | 2015-03-31 | 5 |  |
| 7 | 1.6 | **Ciclo I - RF 1, 2, 5, 6, 7, 9 - Planejar e Elaborar** | 32d | 2015-01-16 A | 2015-02-28 |  | 99% |
| 8 |  | Caso de Uso de Alto Nível | 2d | 2015-01-16 A | 2015-01-17 A |  | 100% |
| 9 |  | Revisão dos Casos de Uso de Alto Nível | 2d | 2015-01-18 A | 2015-01-19 A | 8 | 100% |
| 10 |  | Correção dos Casos de Uso de Alto Nível | 1d | 2015-01-20 A | 2015-01-20 A | 9 | 100% |
| 11 |  | Caso de Uso Expandido | 2d | 2015-01-21 A | 2015-01-22 A | 10 | 100% |
| 12 |  | Revisão dos Casos de Uso Expandido | 1d | 2015-01-23 A | 2015-01-23 A | 11 | 100% |
| 13 |  | Correção dos Casos de Uso Expandido | 1d | 2015-01-24 A | 2015-01-24 A | 12 | 100% |
| 14 |  | Diagrama de Caso de Uso | 1d | 2015-01-25 A | 2015-01-25 A | 13 | 100% |
| 15 |  | Revisão do Diagrama de Caso de Uso | 1d | 2015-01-26 A | 2015-01-26 A | 14 | 100% |
| 16 |  | Correção do Diagrama de Caso de Uso | 1d | 2015-01-27 A | 2015-01-27 A | 15 | 100% |
| 17 |  | Definir Modelo Conceitual Inicial | 2d | 2015-01-28 A | 2015-01-29 A | 16 | 100% |
| 18 |  | Revisão do Modelo Conceitual Inicial | 1d | 2015-01-30 A | 2015-01-30 A | 17 | 100% |
| 19 |  | Correção do Modelo Conceitual Inicial | 1d | 2015-01-31 A | 2015-01-31 A | 18 | 100% |
| 20 |  | Construir - Analisar - RTF | 0d | 2015-02-01 | 2015-02-01 |  |  |
| 21 |  | Refinar Modelo Conceitual | 2d | 2015-02-02 A | 2015-02-03 A | 19 | 100% |
| 22 |  | Revisar Refinar Modelo Conceitual | 1d | 2015-02-04 A | 2015-02-04 A | 21 | 100% |
| 23 |  | Correção Refinar Modelo Conceitual | 1d | 2015-02-05 A | 2015-02-05 A | 22 | 100% |
| 24 |  | Definir Diagrama de Sequência do Sistema | 3d | 2015-02-06 A | 2015-02-10 A | 23 | 100% |
| 25 |  | Revisar Diagrama de Sequência do Sistema | 1d | 2015-02-12 A | 2015-02-12 A | 24 | 100% |
| 26 |  | Correção do Diagrama de Sequência do Sistema | 1d | 2015-02-13 A | 2015-02-13 A | 25 | 100% |
| 27 |  | Construir - Projetar - RTF | 0d | 2015-02-14 | 2015-02-14 |  |  |
| 28 |  | Diagrama de Colaboração | 2d | 2015-02-15 A | 2015-02-16 A | 26 | 100% |
| 29 |  | Revisar Diagrama de Colaboração | 1d | 2015-02-17 A | 2015-02-17 A | 28 | 100% |
| 30 |  | Correção do Diagrama de Colaboração | 1d | 2015-02-18 A | 2015-02-18 A | 29 | 100% |
| 31 |  | Definir Diagrama de Classe do Projeto | 3d | 2015-02-19 A | 2015-02-21 A | 30 | 100% |
| 32 |  | Revisar Diagrama de Classe do Projeto | 1d | 2015-02-23 A | 2015-02-23 A | 31 | 100% |
| 33 |  | Correção do Diagrama de Classe do Projeto | 1d | 2015-02-24 A | 2015-02-24 A | 32 | 100% |
| 34 |  | Construir - Codificação | 2d | 2015-02-25 A | 2015-02-26 A | 33 | 100% |
| 35 |  | Construir Teste | 2d | 2015-02-27 A | 2015-02-28 A | 34 | 100% |
| 36 | 2 | **Ciclo II - RF 4, 8 - Planejar e Elaborar** | 27d | 2015-01-16 A | 2015-02-21 |  | 99% |
| 37 |  | Caso de Uso de Alto Nível | 2d | 2015-01-16 A | 2015-01-17 A | 8SS | 100% |
| 38 |  | Revisão dos Casos de Uso de Alto Nível | 1d | 2015-01-18 A | 2015-01-18 A | 37 | 100% |
| 39 |  | Correção dos Casos de Uso de Alto Nível | 1d | 2015-01-19 A | 2015-01-19 A | 38 | 100% |
| 40 |  | Caso de Uso Expandido | 2d | 2015-01-20 A | 2015-01-21 A | 39 | 100% |
| 41 |  | Revisão dos Casos de Uso Expandido | 1d | 2015-01-22 A | 2015-01-22 A | 40 | 100% |
| 42 |  | Correção dos Casos de Uso Expandido | 1d | 2015-01-23 A | 2015-01-23 A | 41 | 100% |
| 43 |  | Diagrama de Caso de Uso | 2d | 2015-01-24 A | 2015-01-25 A | 42 | 100% |
| 44 |  | Revisão do Diagrama de Caso de Uso | 1d | 2015-01-26 A | 2015-01-26 A | 43 | 100% |
| 45 |  | Correção do Diagrama de Caso de Uso | 1d | 2015-01-27 A | 2015-01-27 A | 44 | 100% |
| 46 |  | Definir Modelo Conceitual Inicial | 2d | 2015-01-28 A | 2015-01-29 A | 45 | 100% |
| 47 |  | Revisão do Modelo Conceitual Inicial | 1d | 2015-01-30 A | 2015-01-30 A | 46 | 100% |
| 48 |  | Correção do Modelo Conceitual Inicial | 1d | 2015-01-31 A | 2015-01-31 A | 47 | 100% |
| 49 |  | Construir - Analisar - RTF | 0d | 2015-01-31 | 2015-01-31 |  |  |
| 50 |  | Refinar Modelo Conceitual | 2d | 2015-02-01 A | 2015-02-02 A | 48 | 100% |
| 51 |  | Revisar Refinar Modelo Conceitual | 1d | 2015-02-03 A | 2015-02-03 A | 50 | 100% |
| 52 |  | Correção Refinar Modelo Conceitual | 1d | 2015-02-04 A | 2015-02-04 A | 51 | 100% |
| 53 |  | Definir Diagrama de Sequência do Sistema | 3d | 2015-02-05 A | 2015-02-07 A | 52 | 100% |
| 54 |  | Revisar Diagrama de Sequência do Sistema | 1d | 2015-02-08 A | 2015-02-08 A | 53 | 100% |
| 55 |  | Correção do Diagrama de Sequência do Sistema | 1d | 2015-02-09 A | 2015-02-09 A | 54 | 100% |
| 56 |  | Construir - Projetar - RTF | 0d | 2015-02-10 | 2015-02-10 |  |  |
| 57 |  | Diagrama de Colaboração | 2d | 2015-02-10 A | 2015-02-11 A | 55 | 100% |
| 58 |  | Revisar Diagrama de Colaboração | 1d | 2015-02-12 A | 2015-02-12 A | 57 | 100% |
| 59 |  | Correção do Diagrama de Colaboração | 1d | 2015-02-13 A | 2015-02-13 A | 58 | 100% |
| 60 |  | Definir Diagrama de Classe do Projeto | 2d | 2015-02-14 A | 2015-02-15 A | 59 | 100% |
| 61 |  | Revisar Diagrama de Classe do Projeto | 1d | 2015-02-16 A | 2015-02-16 A | 60 | 100% |
| 62 |  | Correção do Diagrama de Classe do Projeto | 1d | 2015-02-17 A | 2015-02-17 A | 61 | 100% |
| 63 |  | Construir - Codificação | 2d | 2015-02-18 A | 2015-02-19 A | 62 | 100% |
| 64 |  | Construir Teste | 2d | 2015-02-20 A | 2015-02-21 A | 63 | 100% |
| 65 | 3 | **Ciclo III - RF 3, 10 - Planejar e Elaborar** | 28d | 2015-02-22 | 2015-03-31 |  |  |
| 66 |  | Caso de Uso de Alto Nível | 2d | 2015-02-22 | 2015-02-23 |  |  |
| 67 |  | Revisão dos Casos de Uso de Alto Nível | 1d | 2015-02-24 | 2015-02-24 | 66 |  |
| 68 |  | Correção dos Casos de Uso de Alto Nível | 1d | 2015-02-25 | 2015-02-25 | 67 |  |
| 69 |  | Caso de Uso Expandido | 2d | 2015-02-26 | 2015-02-27 | 68 |  |
| 70 |  | Revisão dos Casos de Uso Expandido | 1d | 2015-02-28 | 2015-02-28 | 69 |  |

| ID | Task | Duration | Start | Finish | Predecessors |
| --- | --- | --- | --- | --- | --- |
| 71 | Correção dos Casos de Uso Expandido | 1d | 2015-03-02 | 2015-03-02 | 70 |
| 72 | Diagrama de Caso de Uso | 2d | 2015-02-26 | 2015-02-27 | 69SS |
| 73 | Revisão do Diagrama de Caso de Uso | 1d | 2015-02-28 | 2015-02-28 | 72 |
| 74 | Correção do Diagrama de Caso de Uso | 1d | 2015-03-01 | 2015-03-01 | 73 |
| 75 | Definir Modelo Conceitual Inicial | 2d | 2015-03-03 | 2015-03-04 | 74, 71 |
| 76 | Revisão do Modelo Conceitual Inicial | 1d | 2015-03-05 | 2015-03-05 | 75 |
| 77 | Correção do Modelo Conceitual Inicial | 1d | 2015-03-06 | 2015-03-06 | 76 |
| 78 | Construir - Analisar - RTF | 0d | 2015-03-07 | 2015-03-07 |  |
| 79 | Refinar Modelo Conceitual | 2d | 2015-03-07 | 2015-03-08 | 77 |
| 80 | Revisar Refinar Modelo Conceitual | 1d | 2015-03-09 | 2015-03-09 | 79 |
| 81 | Correção Refinar Modelo Conceitual | 1d | 2015-03-10 | 2015-03-10 | 80 |
| 82 | Definir Diagrama de Sequência do Sistema | 2d | 2015-03-03 | 2015-03-04 | 71, 75SS |
| 83 | Revisar Diagrama de Sequência do Sistema | 1d | 2015-03-05 | 2015-03-05 | 82 |
| 84 | Correção do Diagrama de Sequência do Sistema | 1d | 2015-03-06 | 2015-03-06 | 83 |
| 85 | Construir - Projetar - RTF | 0d | 2015-03-07 | 2015-03-07 |  |
| 86 | Diagrama de Colaboração | 3d | 2015-03-07 | 2015-03-10 | 84, 77 |
| 87 | Revisar Diagrama de Colaboração | 1d | 2015-03-11 | 2015-03-11 | 86 |
| 88 | Correção do Diagrama de Colaboração | 1d | 2015-03-12 | 2015-03-12 | 87 |
| 89 | Definir Diagrama de Classe do Projeto | 2d | 2015-03-13 | 2015-03-14 | 88 |
| 90 | Revisar Diagrama de Classe do Projeto | 1d | 2015-03-15 | 2015-03-15 | 89 |
| 91 | Correção do Diagrama de Classe do Projeto | 1d | 2015-03-16 | 2015-03-16 | 90 |
| 92 | Construir - Codificação | 5d | 2015-03-17 | 2015-03-23 | 91 |
| 93 | Construir Teste | 2d | 2015-03-24 | 2015-03-25 | 92 |
| 94 | Integração do Sistema/Instalação | 4d | 2015-03-26 | 2015-03-31 | 93 |

## Version 2 (saved 2015-03-17)

Note of the change: Atualização

Last finish stays 2015-04-01. Complete tasks 52 → 57.

Changed:

| ID | Task | Start | Finish | Complete |
| --- | --- | --- | --- | --- |
| 1 | **Gerência** |  |  | 42% → 35% |
| 7 | **Ciclo I - RF 1, 2, 5, 6, 7, 9 - Planejar e Elaborar** |  |  | 99% → 78% |
| 27 | Construir - Projetar - RTF | 2015-02-14 A | 2015-02-14 A | 0% → 100% |
| 28 | Diagrama de Colaboração |  | 2015-02-16 A → 2015-02-16 | 100% → 50% |
| 29 | Revisar Diagrama de Colaboração |  | 2015-02-17 A → 2015-02-17 | 100% → 50% |
| 30 | Correção do Diagrama de Colaboração |  | 2015-02-18 A → 2015-02-18 | 100% → 50% |
| 31 | Definir Diagrama de Classe do Projeto |  | 2015-02-21 A → 2015-02-21 | 100% → 50% |
| 32 | Revisar Diagrama de Classe do Projeto |  | 2015-02-23 A → 2015-02-23 | 100% → 50% |
| 33 | Correção do Diagrama de Classe do Projeto |  | 2015-02-24 A → 2015-02-24 | 100% → 50% |
| 34 | Construir - Codificação | 2015-02-25 A → 2015-02-25 | 2015-02-26 A → 2015-02-26 | 100% → 0% |
| 35 | Construir Teste | 2015-02-27 A → 2015-02-27 | 2015-02-28 A → 2015-02-28 | 100% → 0% |
| 36 | **Ciclo II - RF 4, 8 - Planejar e Elaborar** |  |  | 99% → 78% |
| 56 | Construir - Projetar - RTF | 2015-02-10 A |  | 0% → 50% |
| 57 | Diagrama de Colaboração |  | 2015-02-11 A → 2015-02-11 | 100% → 50% |
| 58 | Revisar Diagrama de Colaboração |  | 2015-02-12 A → 2015-02-12 | 100% → 50% |
| 59 | Correção do Diagrama de Colaboração |  | 2015-02-13 A → 2015-02-13 | 100% → 50% |
| 60 | Definir Diagrama de Classe do Projeto |  | 2015-02-15 A → 2015-02-15 | 100% → 50% |
| 61 | Revisar Diagrama de Classe do Projeto |  | 2015-02-16 A → 2015-02-16 | 100% → 50% |
| 62 | Correção do Diagrama de Classe do Projeto |  | 2015-02-17 A → 2015-02-17 | 100% → 50% |
| 63 | Construir - Codificação | 2015-02-18 A → 2015-02-18 | 2015-02-19 A → 2015-02-19 | 100% → 0% |
| 64 | Construir Teste | 2015-02-20 A → 2015-02-20 | 2015-02-21 A → 2015-02-21 | 100% → 0% |
| 65 | **Ciclo III - RF 3, 10 - Planejar e Elaborar** | 2015-02-22 A |  | 0% → 55% |
| 66 | Caso de Uso de Alto Nível | 2015-02-22 A | 2015-02-23 A | 0% → 100% |
| 67 | Revisão dos Casos de Uso de Alto Nível | 2015-02-24 A | 2015-02-24 A | 0% → 100% |
| 68 | Correção dos Casos de Uso de Alto Nível | 2015-02-25 A | 2015-02-25 A | 0% → 100% |
| 69 | Caso de Uso Expandido | 2015-02-26 A | 2015-02-27 A | 0% → 100% |
| 70 | Revisão dos Casos de Uso Expandido | 2015-02-28 A | 2015-02-28 A | 0% → 100% |
| 71 | Correção dos Casos de Uso Expandido | 2015-03-02 A | 2015-03-02 A | 0% → 100% |
| 72 | Diagrama de Caso de Uso | 2015-02-26 A | 2015-02-27 A | 0% → 100% |
| 73 | Revisão do Diagrama de Caso de Uso | 2015-02-28 A | 2015-02-28 A | 0% → 100% |
| 74 | Correção do Diagrama de Caso de Uso | 2015-03-01 A | 2015-03-01 A | 0% → 100% |
| 75 | Definir Modelo Conceitual Inicial | 2015-03-03 A | 2015-03-04 A | 0% → 100% |
| 76 | Revisão do Modelo Conceitual Inicial | 2015-03-05 A | 2015-03-05 A | 0% → 100% |
| 77 | Correção do Modelo Conceitual Inicial | 2015-03-06 A | 2015-03-06 A | 0% → 100% |
| 78 | Construir - Analisar - RTF | 2015-03-07 A | 2015-03-07 A | 0% → 100% |
| 79 | Refinar Modelo Conceitual | 2015-03-07 A | 2015-03-08 A | 0% → 100% |
| 80 | Revisar Refinar Modelo Conceitual | 2015-03-09 A | 2015-03-09 A | 0% → 100% |
| 81 | Correção Refinar Modelo Conceitual | 2015-03-10 A | 2015-03-10 A | 0% → 100% |
| 82 | Definir Diagrama de Sequência do Sistema | 2015-03-03 A | 2015-03-04 A | 0% → 100% |
| 83 | Revisar Diagrama de Sequência do Sistema | 2015-03-05 A | 2015-03-05 A | 0% → 100% |
| 84 | Correção do Diagrama de Sequência do Sistema | 2015-03-06 A | 2015-03-06 A | 0% → 100% |
| 85 | Construir - Projetar - RTF | 2015-03-07 A | 2015-03-07 A | 0% → 100% |
